# Exercicio GDP

Schedule from MS Project, 2017-11-01 to 2018-04-17, costs in R$.

## Calendars

- Padrão: Mon-Fri 09:00-12:00, 13:00-18:00; Sat-Sun off. Exceptions (off unless hours are given): 2017-11-02 (Feriado), 2017-11-15 (Feriado), 2017-12-08 (Feriado), 2017-12-25 (Feriado), 2018-01-01 (Feriado).

## Resources

| Resource | Rate |
| --- | --- |
| Gerente de Projeto | 100 |
| Gerente Comercial | 90 |
| Coordenador de Vendas | 80 |
| Analista de Sistemas | 50 |
| Analista de Banco de Dados | 40 |
| Analista de Negócios | 60 |
| CEO |  |
| Gernte de |  |
| Anli |  |

## Schedule

| ID | WBS | Task | Duration | Start | Finish | Predecessors | Total slack | Free slack | Resources | Work | Cost |
| --- | --- | --- | --- | --- | --- | --- | --- | --- | --- | --- | --- |
| 1 | 1 | **Projeto BI Comercial** | 115d | 2017-11-01 | 2018-04-17 |  | 0d |  |  | 1186h | 60,840 |
| 2 | 1.1 | **Iniciação** | 2d | 2017-11-01 | 2017-11-03 |  | 0d |  |  | 38h | 2,880 |
| 3 | 1.1.1 | Desenvolver TAP - Termo de abertura do Projeto | 0.5d | 2017-11-01 | 2017-11-01 |  | 0d |  | Gerente de Projeto | 4h | 400 |
| 4 | 1.1.2 | Identifica Stakeholders | 1d | 2017-11-01 | 2017-11-03 | 3 | 0d |  | Gerente de Projeto | 8h | 800 |
| 5 | 1.1.3 | Reunião de kick-off | 0.5d | 2017-11-03 | 2017-11-03 | 4 | 0d |  | Analista de Banco de Dados; Analista de Negócios; Analista de Sistemas; CEO [50%]; Coordenador de Vendas; Gerente Comercial; Gerente de Projeto | 26h | 1,680 |
| 6 | 1.2 | **Planejamento** | 7d | 2017-11-06 | 2017-11-14 |  | 0d |  |  | 64h | 6,080 |
| 7 | 1.2.1 | Desenvolver Plano do Projeto | 5d | 2017-11-06 | 2017-11-10 | 5 | 0d |  | Gerente de Projeto | 40h | 4,000 |
| 8 | 1.2.2 | Desenvolver Cronograma | 1d | 2017-11-13 | 2017-11-13 | 7 | 0d |  | Gerente de Projeto | 8h | 800 |
| 9 | 1.2.3 | Desenvolver Orçamento | 1d | 2017-11-14 | 2017-11-14 | 8 | 0d |  | Analista de Negócios; Gerente de Projeto | 16h | 1,280 |
| 10 | 1.3 | **Execução** | 115d | 2017-11-01 | 2018-04-17 |  | 0d |  |  | 1072h | 50,800 |
| 11 | 1.3.1 | **Desenvolver DW** | 35d | 2017-11-01 | 2017-12-22 |  | 0d |  |  | 216h | 8,640 |
| 12 | 1.3.1.1 | Instalar SGBD | 0.5d | 2017-11-01 | 2017-11-01 |  | 8d | 0d | Analista de Banco de Dados | 4h | 160 |
| 13 | 1.3.1.2 | Configurar SGBD | 0.5d | 2017-11-01 | 2017-11-01 | 12 | 8d |  | Analista de Banco de Dados | 4h | 160 |
| 14 | 1.3.1.3 | Criar Staging | 10d | 2017-11-16 | 2017-11-29 | 9, 13 | 0d |  | Analista de Banco de Dados | 80h | 3,200 |
| 15 | 1.3.1.4 | Definir/Criar Dimensões | 8d | 2017-11-30 | 2017-12-12 | 14 | 0d |  | Analista de Banco de Dados | 64h | 2,560 |
| 16 | 1.3.1.5 | Definir/Criar Fato | 5d | 2017-12-13 | 2017-12-19 | 15 | 0d |  | Analista de Banco de Dados | 40h | 1,600 |
| 17 | 1.3.1.6 | Criar Metadados | 3d | 2017-12-20 | 2017-12-22 | 15, 16 | 0d |  | Analista de Banco de Dados | 24h | 960 |
| 18 | 1.3.2 | **Desenvolver ETL** | 33d | 2017-12-26 | 2018-02-09 |  | 0d |  |  | 464h | 24,080 |
| 19 | 1.3.2.1 | Desenvolver rotinas de ETL | 12d | 2017-12-26 | 2018-01-11 | 17 | 0d |  | Analista de Sistemas | 96h | 4,800 |
| 20 | 1.3.2.2 | Testes das rotinas de ETL | 2d | 2018-01-12 | 2018-01-15 | 19 | 0d |  | Analista de Sistemas | 16h | 800 |
| 21 | 1.3.2.3 | Tratar Qualidade de Dados | 16d | 2018-01-16 | 2018-02-06 | 20 | 0d |  | Analista de Banco de Dados; Analista de Sistemas | 256h | 11,520 |
| 22 | 1.3.2.4 | Validação das Informações | 3d | 2018-02-07 | 2018-02-09 | 21 | 0d |  | Analista de Negócios; Analista de Sistemas; Coordenador de Vendas; Gerente de Projeto | 96h | 6,960 |
| 23 | 1.3.3 | **Desenvolver OLAP** | 37d | 2018-02-12 | 2018-04-03 |  | 0d |  |  | 296h | 11,840 |
| 24 | 1.3.3.1 | Criar Cubos OLAP | 20d | 2018-02-12 | 2018-03-09 | 22 | 0d |  | Analista de Banco de Dados | 160h | 6,400 |
| 25 | 1.3.3.2 | Construção do modelo de dados(Mod. Dimensional) | 1d | 2018-03-12 | 2018-03-12 | 24 | 0d |  | Analista de Banco de Dados | 8h | 320 |
| 26 | 1.3.3.3 | Criar Dimensões | 8d | 2018-03-13 | 2018-03-22 | 25 | 0d |  | Analista de Banco de Dados | 64h | 2,560 |
| 27 | 1.3.3.4 | Criar Fato | 5d | 2018-03-23 | 2018-03-29 | 26 | 0d |  | Analista de Banco de Dados | 40h | 1,600 |
| 28 | 1.3.3.5 | Criar Metadados | 3d | 2018-03-30 | 2018-04-03 | 27 | 0d |  | Analista de Banco de Dados | 24h | 960 |

| ID | WBS | Task | Duration | Start | Finish | Predecessors | Total slack | Free slack | Resources | Work | Cost |
| --- | --- | --- | --- | --- | --- | --- | --- | --- | --- | --- | --- |
| 29 | 1.3.4 | **Documentação** | 10d | 2018-04-04 | 2018-04-17 |  | 0d |  |  | 80h | 4,800 |
| 30 | 1.3.4.1 | Gerar Documentação | 10d | 2018-04-04 | 2018-04-17 | 28 | 0d |  | Analista de Negócios | 80h | 4,800 |
| 31 | 1.3.5 | **Fazer Reunião** | 1d | 2018-04-04 | 2018-04-04 |  | 7.5d |  |  | 16h | 1,440 |
| 32 | 1.3.5.1 | Reunião de apresentação da estrutura de informações | 1d | 2018-04-04 | 2018-04-04 | 28 | 7.5d | 0d | Coordenador de Vendas; Gerente de Projeto | 16h | 1,440 |
| 33 | 1.4 | **Encerramento** | 1.5d | 2018-04-05 | 2018-04-06 |  | 7.5d |  |  | 12h | 1,080 |
| 34 | 1.4.1 | Reunião de entrega do projeto | 0.5d | 2018-04-05 | 2018-04-05 | 32 | 7.5d | 0d | Coordenador de Vendas; Gerente Comercial; Gerente de Projeto | 12h | 1,080 |
| 35 | 1.4.2 | Desenvolver Lições Aprendidas | 1d | 2018-04-05 | 2018-04-06 | 34 | 7.5d |  |  |  |  |
